# InitialGantt

Schedule from MS Project, 2019-09-03 to 2019-12-20, 4 hours a day.

## Calendars

- Copy of Standard: Mon-Fri 08:00-12:00, 13:00-17:00; Sat-Sun off. Exceptions (off unless hours are given): 2019-09-02 to 2019-12-20 (mondays, recurring), 2019-09-03 to 2019-12-20 13:00-17:00 (half days, recurring).

## Schedule

| ID | WBS | Task | Duration | Start | Finish | Predecessors | Total slack | Free slack |
| --- | --- | --- | --- | --- | --- | --- | --- | --- |
| 1 | 1 | **Deduplicator** | 47.06d? | 2019-09-03 13:00 | 2019-12-20 13:15 |  | 0d |  |
| 2 | 1.1 | Introduzione | 4h | 2019-09-03 13:00 | 2019-09-03 17:00 |  | 1.56d | 0d |
| 3 | 1.2 | **Ricerca** | 1d | 2019-09-05 13:00 | 2019-09-05 17:00 | 2 | 1.56d | 0d |
| 4 | 1.2.1 | Ricerca Linguaggio | 2h | 2019-09-05 13:00 | 2019-09-05 15:00 |  | 1.56d | 0d |
| 5 | 1.2.2 | Ricerca Sicurezza | 2h | 2019-09-05 15:00 | 2019-09-05 17:00 | 4 | 1.56d |  |
| 6 | 1.3 | **Analisi** | 5d | 2019-09-06 13:00 | 2019-09-17 17:00 | 3 | 1.56d | 0d |
| 7 | 1.3.1 | Pianificazione | 1h | 2019-09-06 13:00 | 2019-09-06 14:00 |  | 1.56d | 0d |
| 8 | 1.3.2 | Analisi del dominio | 2h | 2019-09-06 14:00 | 2019-09-06 16:00 | 7 | 1.56d | 0d |
| 9 | 1.3.3 | Analisi e specifica dei requisiti | 3h | 2019-09-06 16:00 | 2019-09-10 15:00 | 8 | 1.56d | 0d |
| 10 | 1.3.4 | Use Case | 3h | 2019-09-10 15:00 | 2019-09-12 14:00 | 9 | 1.56d | 0d |
| 11 | 1.3.5 | Analisi dei Mezzi | 3h | 2019-09-12 14:00 | 2019-09-12 17:00 | 10 | 1.56d | 0d |
| 12 | 1.3.6 | Design delle interfaccie | 4h | 2019-09-13 13:00 | 2019-09-13 17:00 | 11 | 1.56d | 0d |
| 13 | 1.3.7 | Design procedurale | 4h | 2019-09-17 13:00 | 2019-09-17 17:00 | 12 | 1.56d |  |
| 14 | 1.4 | **Progettazione** | 4d | 2019-09-19 13:00 | 2019-09-26 17:00 | 6 | 1.56d | 0d |
| 15 | 1.4.1 | Progettazione Daemon/Servizio | 6h | 2019-09-19 13:00 | 2019-09-20 15:00 |  | 1.56d | 0d |
| 16 | 1.4.2 | Progettazione GUI | 10h | 2019-09-20 15:00 | 2019-09-26 17:00 | 15 | 1.56d |  |
| 17 | 1.5 | Documentazione | 44h | 2019-09-03 13:00 | 2019-09-26 17:00 |  | 36.06d |  |
| 18 | 1.6 | **Implementazione Daemon/Servizio** | 13.5d | 2019-10-04 15:00 | 2019-11-05 17:00 | 14FS+14h | 1.56d | 0d |
| 19 | 1.6.1 | Implementazione entita | 6h | 2019-10-04 15:00 | 2019-10-08 17:00 |  | 1.56d | 0d |
| 20 | 1.6.2 | Implementazione controller percorsi | 4h | 2019-10-10 13:00 | 2019-10-10 17:00 | 19 | 1.56d | 0d |
| 21 | 1.6.3 | Test Controller percorsi | 2h | 2019-10-10 15:00 | 2019-10-10 17:00 | 20SS+2h | 1.56d | 0d |
| 22 | 1.6.4 | Implementazione controller scan | 6h | 2019-10-11 13:00 | 2019-10-15 15:00 | 21 | 1.56d | 0d |
| 23 | 1.6.5 | Test Controller scan | 2h | 2019-10-17 13:00 | 2019-10-17 15:00 | 22FS+2h | 10.06d |  |
| 24 | 1.6.6 | Implementazione report controller | 7h | 2019-10-15 15:00 | 2019-10-18 14:00 | 22 | 1.56d | 0d |
| 25 | 1.6.7 | Implementazione controller file | 2h | 2019-10-15 15:00 | 2019-10-15 17:00 | 24SS | 1.56d | 0d |
| 26 | 1.6.8 | Test controller file and report | 3h | 2019-10-17 13:00 | 2019-10-17 16:00 | 25SS+2h, 24SS+2h | 1.56d | 0d |
| 27 | 1.6.9 | Implementazione Scheduler | 8h | 2019-10-17 16:00 | 2019-10-22 16:00 | 26 | 1.56d | 0d |
| 28 | 1.6.10 | Implementazione Autenticazione | 10h | 2019-10-17 16:00 | 2019-10-24 14:00 | 27SS | 1.56d | 0d |
| 29 | 1.6.11 | Test Autenticazione | 12h | 2019-10-24 14:00 | 2019-10-31 14:00 | 28 | 1.56d | 0d |
| 30 | 1.6.12 | Test Scheduler | 11h | 2019-10-31 14:00 | 2019-11-05 17:00 | 29 | 1.56d |  |
| 31 | 1.7 | Test Daemon/Servizio | 6h | 2019-11-07 13:00 | 2019-11-08 15:00 | 18 | 1.56d | 0d |

| ID | WBS | Task | Type | Duration | Start | Finish | Predecessors | Total slack | Free slack | Constraint |
| --- | --- | --- | --- | --- | --- | --- | --- | --- | --- | --- |
| 32 | 1.8 | **Implementazione GUI** |  | 9d | 2019-11-08 15:00 | 2019-11-29 15:00 | 31 | 1.56d | 0d |  |
| 33 | 1.8.1 | Implemetazione Client della GUI |  | 8h | 2019-11-08 15:00 | 2019-11-14 15:00 |  | 1.56d | 0d |  |
| 34 | 1.8.2 | Implementazione Schermata Login |  | 6h | 2019-11-14 15:00 | 2019-11-15 17:00 | 33 | 1.56d | 0d |  |
| 35 | 1.8.3 | Implementazione schermata Path |  | 8h | 2019-11-19 13:00 | 2019-11-21 17:00 | 34 | 1.56d | 0d |  |
| 36 | 1.8.4 | Implementazione schermata Duplicates |  | 14h | 2019-11-22 13:00 | 2019-11-29 15:00 | 35 | 1.56d |  |  |
| 37 | 1.9 | Test GUI |  | 14h | 2019-11-29 15:00 | 2019-12-06 17:00 | 32 | 1.56d | 0d |  |
| 38 | 1.10 | Test schermata duplicates |  | 10h | 2019-12-10 13:00 | 2019-12-13 15:00 | 37 | 1.56d | 0d |  |
| 39 | 1.11 | Integrazione HTTPS nel progetto |  | 4h | 2019-12-13 15:00 | 2019-12-17 15:00 | 38 | 1.56d | 1.06d |  |
| 40 | 1.12 | Documentazione |  | 42h | 2019-11-26 13:15 | 2019-12-19 15:15 | 39FF | 0.5d |  | start no earlier than 2019-11-26 13:15 |
| 41 | 1.13 | Consegna | milestone, manual | 0h | 2019-12-20 13:15 | 2019-12-20 13:15 | 40 |  |  | start no earlier than 2019-12-20 13:15 |
